# GestionProyecto

How a schedule from MS Project changed from version to version. A marks actual dates.

## Version 1 (saved 2013-05-02)

Note of the change: Introducción de las fases y las tareas

| ID | WBS | Task | Duration | Start | Finish | Total float |
| --- | --- | --- | --- | --- | --- | --- |
| 1 | 1 | **1 TOTAL PROYECTO** | 1d | 2013-04-03 | 2013-04-03 |  |
| 2 | 1.1 | **1.1 PREPARACION PARA LA FORMULACION** | 1d | 2013-04-03 | 2013-04-03 |  |
| 3 |  | 1.1.1 INICIO | 1d | 2013-04-03 | 2013-04-03 |  |
| 4 |  | 1.1.2 TERMINOS DE REFERENCIA | 1d | 2013-04-03 | 2013-04-03 |  |
| 5 |  | 1.1.3 FINANCIACION | 1d | 2013-04-03 | 2013-04-03 |  |
| 6 |  | 1.1.4 COMITÉ DE COORDINACION | 1d | 2013-04-03 | 2013-04-03 |  |
| 7 |  | 1.1.5 EQUIPO DE FORMULACION | 1d | 2013-04-03 | 2013-04-03 |  |
| 8 |  | 1.1.6 METODOLOGIA Y PLAN DE TRABAJO | 1d | 2013-04-03 | 2013-04-03 |  |
| 9 |  | 1.1.7 DOC Nº1 | 1d | 2013-04-03 | 2013-04-03 |  |
| 10 |  | 1.1.8 ENTREGA DOC Nº1 | 1d | 2013-04-03 | 2013-04-03 |  |
| 11 |  | 1.1.9 SEMINARIO LANZ. POYECTO | 1d | 2013-04-03 | 2013-04-03 |  |
| 12 | 1.2 | **1.2 ANALASIS Y DIAGNOSTICO** | 1d | 2013-04-03 | 2013-04-03 |  |
| 13 |  | 1.2.1 ANALISIS ANTECEDENTES | 1d | 2013-04-03 | 2013-04-03 |  |
| 14 |  | 1.2.1.1 POLITICAS Y PROGRAMAS | 1d | 2013-04-03 | 2013-04-03 |  |
| 15 |  | 1.2.1.2 MARCO LEGAL | 1d | 2013-04-03 | 2013-04-03 |  |
| 16 |  | 1.2.1.3 BD EXISTENTE | 1d | 2013-04-03 | 2013-04-03 |  |
| 17 |  | 1.2.2 ANALISIS AREA PROYECTO | 1d | 2013-04-03 | 2013-04-03 |  |
| 18 |  | 1.2.2.1 INVENTARIO AMBIENAL | 1d | 2013-04-03 | 2013-04-03 |  |
| 19 |  | 1.2.2.2 INFRAESTTRUCTURAS Y SERVIC | 1d | 2013-04-03 | 2013-04-03 |  |
| 20 |  | 1.2.2.3 ANALISIS DE SECTORES | 1d | 2013-04-03 | 2013-04-03 |  |
| 21 |  | 1.2.2.4 ANALISIS POBLACIONAL | 1d | 2013-04-03 | 2013-04-03 |  |
| 22 |  | 1.2.2.5 SISTEMA TERRITORIAL INFO | 1d | 2013-04-03 | 2013-04-03 |  |
| 23 |  | 1.2.3 ANALISIS AGENE Y PARTICIPACION | 1d | 2013-04-03 | 2013-04-03 |  |
| 24 |  | 1.2.3.1 IDENT. AGENTES Y TIPOLOGIA | 1d | 2013-04-03 | 2013-04-03 |  |
| 25 |  | 1.2.3.2 ENCUESTA CON LOS AGENTES | 1d | 2013-04-03 | 2013-04-03 |  |
| 26 |  | 1.2.3.3 TALLER DE PARTICIPACION AP | 1d | 2013-04-03 | 2013-04-03 |  |
| 27 |  | 1.2.3.4 ANALISIS PROSPECIVO "SIN" | 1d | 2013-04-03 | 2013-04-03 |  |
| 28 |  | 1.2.3.5 INFORME DE PARTICIPACION | 1d | 2013-04-03 | 2013-04-03 |  |
| 29 |  | 1.2.3.6 PRESENTACION Y VAL. CONCLUSIONES | 1d | 2013-04-03 | 2013-04-03 |  |
| 30 |  | 1.2.4 CONCLUSIONES Y DOC Nº2 | 1d | 2013-04-03 | 2013-04-03 |  |
| 31 |  | 1.2.5 DOC Nº2 REVISION PROMOTOR | 1d | 2013-04-03 | 2013-04-03 |  |
| 32 | 1.3 | **1.3 DISEÑO DEL PROYECTO** | 1d | 2013-04-03 | 2013-04-03 | 0d |
| 33 |  | 1.3.1 OBJETTIVOS Y METAS | 1d | 2013-04-03 | 2013-04-03 |  |
| 34 |  | 1.3.2 ALTERNATIVAS ESTRATEGICAS | 1d | 2013-04-03 | 2013-04-03 |  |
| 35 |  | 1.3.3 FORMULACION DE LOS COMPONENTTES | 1d | 2013-04-03 | 2013-04-03 |  |
| 36 |  | 1.3.4 DISEÑO DE LA ORGANIZACIÓN | 1d | 2013-04-03 | 2013-04-03 |  |
| 37 |  | 1.3.5 SISTEMA DE SEGUIMIENTO Y EVALUACION | 1d | 2013-04-03 | 2013-04-03 |  |
| 38 |  | 1.3.6 PRESUPUESTACION | 1d | 2013-04-03 | 2013-04-03 |  |
| 39 |  | 1.3.7 DOC Nº3 ENTREGRA PROMOTOR | 1d | 2013-04-03 | 2013-04-03 |  |
| 40 |  | 1.3.8 DOC Nº3 REVISION PROMOTOR | 1d | 2013-04-03 | 2013-04-03 |  |
| 41 | 1.4 | **1.4 EVALUACION MULTICRITERIO** | 1d | 2013-04-03 | 2013-04-03 | 0d |
| 42 |  | 1.4.1 EVALUACION ECONOMICO-FINANCIERA | 1d | 2013-04-03 | 2013-04-03 |  |
| 43 |  | 1.4.2 EVALUACION SOCIOAL Y CULTTURAL | 1d | 2013-04-03 | 2013-04-03 |  |
| 44 |  | 1.4.3 EVALUACION AMBIENTAL | 1d | 2013-04-03 | 2013-04-03 |  |
| 45 |  | 1.4.4 EVALUACION DE RIESGO, SEGURIDAD Y SALUD DEL PROYECTO | 1d | 2013-04-03 | 2013-04-03 |  |
| 46 |  | 1.4.5 ENTREGA DOC Nº 4 | 1d | 2013-04-03 | 2013-04-03 |  |
| 47 |  | 1.4.6 REVISION DOC Nº4 | 1d | 2013-04-03 | 2013-04-03 |  |
| 48 | 1.5 | **1.5 DOCUMENTACION** | 1d | 2013-04-03 | 2013-04-03 | 0d |
| 49 |  | 1.5.1 MEMORIA | 1d | 2013-04-03 | 2013-04-03 |  |
| 50 |  | 1.5.2 ANEXOS A LA MEMORIA | 1d | 2013-04-03 | 2013-04-03 |  |
| 51 |  | 1.5.3 PLANOS | 1d | 2013-04-03 | 2013-04-03 |  |
| 52 |  | 1.5.4 PLIEGO DE CONDICIONES | 1d | 2013-04-03 | 2013-04-03 |  |
| 53 |  | 1.5.5 PRESUPUESTO | 1d | 2013-04-03 | 2013-04-03 |  |
| 54 |  | 1.5.6 ESTUDIO DE SEGURIDAD Y SALUD | 1d | 2013-04-03 | 2013-04-03 |  |
| 55 |  | 1.5.7 ENTREGA DEL PROYECTO | 1d | 2013-04-03 | 2013-04-03 |  |

## Version 2 (saved 2013-05-03)

Note of the change: Añadidas dependencias y duración de las tareas

Last finish 2013-04-03 → 2014-02-27 (+330d).

Added:

| ID | Task | Duration | Start | Finish | Predecessors |
| --- | --- | --- | --- | --- | --- |
| 13 | **1.2.1 ANALISIS ANTECEDENTES** | 15d | 2013-05-06 | 2013-05-24 | 11 |
| 17 | **1.2.2 ANALISIS AREA PROYECTO** | 80d | 2013-05-15 | 2013-09-03 | 11, 16 |
| 23 | **1.2.3 ANALISIS AGENE Y PARTICIPACION** | 82d | 2013-05-22 | 2013-09-12 |  |

Removed: 13 1.2.1 ANALISIS ANTECEDENTES; 17 1.2.2 ANALISIS AREA PROYECTO; 23 1.2.3 ANALISIS AGENE Y PARTICIPACION

Changed:

| ID | Task | Start | Finish | Duration | Total float | Predecessors |
| --- | --- | --- | --- | --- | --- | --- |
| 1 | **1 TOTAL PROYECTO** | 2013-04-03 → 2013-03-22 (-12d) | 2013-04-03 → 2014-02-24 (+327d) | 1d → 242d |  |  |
| 2 | **1.1 PREPARACION PARA LA FORMULACION** | 2013-04-03 → 2013-03-22 (-12d) | 2013-04-03 → 2013-05-03 (+30d) | 1d → 31d |  |  |
| 3 | 1.1.1 INICIO | 2013-04-03 → 2013-03-22 (-12d) | 2013-04-03 → 2013-03-22 (-12d) | 1d → 0d |  |  |
| 4 | 1.1.2 TERMINOS DE REFERENCIA | 2013-04-03 → 2013-03-22 (-12d) | 2013-04-03 → 2013-04-04 (+1d) | 1d → 10d |  | none → 3 |
| 5 | 1.1.3 FINANCIACION | 2013-04-03 → 2013-03-22 (-12d) | 2013-04-03 → 2013-04-01 (-2d) | 1d → 7d |  | none → 3 |
| 6 | 1.1.4 COMITÉ DE COORDINACION | 2013-04-03 → 2013-03-22 (-12d) | 2013-04-03 → 2013-03-28 (-6d) | 1d → 5d |  | none → 3 |
| 7 | 1.1.5 EQUIPO DE FORMULACION | 2013-04-03 → 2013-03-29 (-5d) | 2013-04-03 → 2013-04-18 (+15d) | 1d → 15d |  | none → 4SS, 6 |
| 8 | 1.1.6 METODOLOGIA Y PLAN DE TRABAJO | 2013-04-03 → 2013-04-12 (+9d) | 2013-04-03 → 2013-04-25 (+22d) | 1d → 10d |  | none → 7FS-5d, 5, 4, 6SS |
| 9 | 1.1.7 DOC Nº1 | 2013-04-03 → 2013-04-26 (+23d) | 2013-04-03 → 2013-05-02 (+29d) | 1d → 5d |  | none → 8 |
| 10 | 1.1.8 ENTREGA DOC Nº1 | 2013-04-03 → 2013-05-03 (+30d) | 2013-04-03 → 2013-05-03 (+30d) | 1d → 0d |  | none → 9 |
| 11 | 1.1.9 SEMINARIO LANZ. POYECTO | 2013-04-03 → 2013-05-03 (+30d) | 2013-04-03 → 2013-05-03 (+30d) |  |  | none → 10 |
| 12 | **1.2 ANALASIS Y DIAGNOSTICO** | 2013-04-03 → 2013-05-06 (+33d) | 2013-04-03 → 2013-09-12 (+162d) | 1d → 94d |  |  |
| 14 | 1.2.1.1 POLITICAS Y PROGRAMAS | 2013-04-03 → 2013-05-06 (+33d) | 2013-04-03 → 2013-05-17 (+44d) | 1d → 10d |  | none → 11 |
| 15 | 1.2.1.2 MARCO LEGAL | 2013-04-03 → 2013-05-06 (+33d) | 2013-04-03 → 2013-05-24 (+51d) | 1d → 15d |  | none → 11 |
| 16 | 1.2.1.3 BD EXISTENTE | 2013-04-03 → 2013-05-06 (+33d) | 2013-04-03 → 2013-05-14 (+41d) | 1d → 7d |  | none → 11 |
| 18 | 1.2.2.1 INVENTARIO AMBIENAL | 2013-04-03 → 2013-03-22 (-12d) | 2013-04-03 → 2013-05-09 (+36d) | 1d → 35d |  |  |
| 19 | 1.2.2.2 INFRAESTTRUCTURAS Y SERVIC | 2013-04-03 → 2013-05-10 (+37d) | 2013-04-03 → 2013-06-06 (+64d) | 1d → 20d |  | none → 18 |
| 20 | 1.2.2.3 ANALISIS DE SECTORES | 2013-04-03 → 2013-06-07 (+65d) | 2013-04-03 → 2013-07-11 (+99d) | 1d → 25d |  | none → 14, 13, 15, 19 |
| 21 | 1.2.2.4 ANALISIS POBLACIONAL | 2013-04-03 → 2013-05-15 (+42d) | 2013-04-03 → 2013-06-11 (+69d) | 1d → 20d |  |  |
| 22 | 1.2.2.5 SISTEMA TERRITORIAL INFO | 2013-04-03 → 2013-05-15 (+42d) | 2013-04-03 → 2013-06-12 (+70d) | 1d → 21d |  | none → 16 |
| 24 | 1.2.3.1 IDENT. AGENTES Y TIPOLOGIA | 2013-04-03 → 2013-05-22 (+49d) | 2013-04-03 → 2013-06-04 (+62d) | 1d → 10d |  | none → 22SS+5d |
| 25 | 1.2.3.2 ENCUESTA CON LOS AGENTES | 2013-04-03 → 2013-06-05 (+63d) | 2013-04-03 → 2013-08-27 (+146d) | 1d → 60d |  | none → 24 |
| 26 | 1.2.3.3 TALLER DE PARTICIPACION AP | 2013-04-03 → 2013-06-19 (+77d) | 2013-04-03 → 2013-06-19 (+77d) |  |  | none → 25SS+10d |
| 27 | 1.2.3.4 ANALISIS PROSPECIVO "SIN" | 2013-04-03 → 2013-06-20 (+78d) | 2013-04-03 → 2013-06-27 (+85d) | 1d → 6d |  | none → 26 |
| 28 | 1.2.3.5 INFORME DE PARTICIPACION | 2013-04-03 → 2013-08-28 (+147d) | 2013-04-03 → 2013-09-10 (+160d) | 1d → 10d |  | none → 27, 25 |
| 29 | 1.2.3.6 PRESENTACION Y VAL. CONCLUSIONES | 2013-04-03 → 2013-09-11 (+161d) | 2013-04-03 → 2013-09-12 (+162d) | 1d → 2d |  | none → 28 |
| 30 | 1.2.4 CONCLUSIONES Y DOC Nº2 | 2013-04-03 → 2013-09-13 (+163d) | 2013-04-03 → 2013-09-13 (+163d) |  |  | none → 29 |
| 31 | 1.2.5 DOC Nº2 REVISION PROMOTOR | 2013-04-03 → 2013-09-16 (+166d) | 2013-04-03 → 2013-09-16 (+166d) |  |  | none → 29, 30 |
| 32 | **1.3 DISEÑO DEL PROYECTO** | 2013-04-03 → 2013-09-17 (+167d) | 2013-04-03 → 2014-01-22 (+294d) | 1d → 92d | 0d → none |  |
| 33 | 1.3.1 OBJETTIVOS Y METAS | 2013-04-03 → 2013-09-17 (+167d) | 2013-04-03 → 2013-09-17 (+167d) |  |  | none → 31 |
| 34 | 1.3.2 ALTERNATIVAS ESTRATEGICAS | 2013-04-03 → 2013-09-18 (+168d) | 2013-04-03 → 2013-09-26 (+176d) | 1d → 7d |  | none → 33 |
| 35 | 1.3.3 FORMULACION DE LOS COMPONENTTES | 2013-04-03 → 2013-09-27 (+177d) | 2013-04-03 → 2013-12-19 (+260d) | 1d → 60d |  | none → 34 |
| 36 | 1.3.4 DISEÑO DE LA ORGANIZACIÓN | 2013-04-03 → 2013-12-20 (+261d) | 2013-04-03 → 2014-01-02 (+274d) | 1d → 10d |  | none → 35 |
| 37 | 1.3.5 SISTEMA DE SEGUIMIENTO Y EVALUACION | 2013-04-03 → 2014-01-03 (+275d) | 2013-04-03 → 2014-01-13 (+285d) | 1d → 7d |  | none → 36, 35 |
| 38 | 1.3.6 PRESUPUESTACION | 2013-04-03 → 2014-01-03 (+275d) | 2013-04-03 → 2014-01-08 (+280d) | 1d → 4d |  | none → 35, 36 |
| 39 | 1.3.7 DOC Nº3 ENTREGRA PROMOTOR | 2013-04-03 → 2014-01-09 (+281d) | 2013-04-03 → 2014-01-09 (+281d) | 1d → 0d |  | none → 38 |
| 40 | 1.3.8 DOC Nº3 REVISION PROMOTOR | 2013-04-03 → 2014-01-09 (+281d) | 2013-04-03 → 2014-01-22 (+294d) | 1d → 10d |  | none → 39 |
| 41 | **1.4 EVALUACION MULTICRITERIO** | 2013-04-03 → 2014-01-23 (+295d) | 2013-04-03 → 2014-02-12 (+315d) | 1d → 15d | 0d → none |  |
| 42 | 1.4.1 EVALUACION ECONOMICO-FINANCIERA | 2013-04-03 → 2014-01-23 (+295d) | 2013-04-03 → 2014-02-05 (+308d) | 1d → 10d |  | none → 40 |
| 43 | 1.4.2 EVALUACION SOCIOAL Y CULTTURAL | 2013-04-03 → 2014-01-23 (+295d) | 2013-04-03 → 2014-02-05 (+308d) | 1d → 10d |  | none → 40 |
| 44 | 1.4.3 EVALUACION AMBIENTAL | 2013-04-03 → 2014-01-23 (+295d) | 2013-04-03 → 2014-02-05 (+308d) | 1d → 10d |  | none → 40 |
| 45 | 1.4.4 EVALUACION DE RIESGO, SEGURIDAD Y SALUD DEL PROYECTO | 2013-04-03 → 2014-01-23 (+295d) | 2013-04-03 → 2014-02-05 (+308d) | 1d → 10d |  | none → 40 |
| 46 | 1.4.5 ENTREGA DOC Nº 4 | 2013-04-03 → 2014-02-06 (+309d) | 2013-04-03 → 2014-02-06 (+309d) | 1d → 0d |  | none → 45 |
| 47 | 1.4.6 REVISION DOC Nº4 | 2013-04-03 → 2014-02-06 (+309d) | 2013-04-03 → 2014-02-12 (+315d) | 1d → 5d |  | none → 42, 43, 44 |
| 48 | **1.5 DOCUMENTACION** | 2013-04-03 → 2014-02-13 (+316d) | 2013-04-03 → 2014-02-26 (+329d) | 1d → 10d | 0d → none |  |
| 49 | 1.5.1 MEMORIA | 2013-04-03 → 2014-02-13 (+316d) | 2013-04-03 → 2014-02-20 (+323d) | 1d → 6d |  | none → 47 |
| 50 | 1.5.2 ANEXOS A LA MEMORIA | 2013-04-03 → 2014-02-13 (+316d) | 2013-04-03 → 2014-02-26 (+329d) | 1d → 10d |  | none → 47 |
| 51 | 1.5.3 PLANOS | 2013-04-03 → 2014-02-13 (+316d) | 2013-04-03 → 2014-02-26 (+329d) | 1d → 10d |  | none → 47 |
| 52 | 1.5.4 PLIEGO DE CONDICIONES | 2013-04-03 → 2014-02-13 (+316d) | 2013-04-03 → 2014-02-17 (+320d) | 1d → 3d |  | none → 47 |
| 53 | 1.5.5 PRESUPUESTO | 2013-04-03 → 2014-02-13 (+316d) | 2013-04-03 → 2014-02-17 (+320d) | 1d → 3d |  | none → 47 |
| 54 | 1.5.6 ESTUDIO DE SEGURIDAD Y SALUD | 2013-04-03 → 2014-02-13 (+316d) | 2013-04-03 → 2014-02-26 (+329d) | 1d → 10d |  | none → 47 |
| 55 | 1.5.7 ENTREGA DEL PROYECTO | 2013-04-03 → 2014-02-27 (+330d) | 2013-04-03 → 2014-02-27 (+330d) | 1d → 0d |  | none → 54, 49, 50, 51, 52, 53 |

## Version 3 (saved 2013-05-03)

Note of the change: Asignación de recursos a tareas

Last finish stays 2014-02-27.

Changed:

| ID | Task | Start | Finish | Other |
| --- | --- | --- | --- | --- |
| 3 | 1.1.1 INICIO |  |  | resources none → DIRECTOR PROYECTO |
| 4 | 1.1.2 TERMINOS DE REFERENCIA |  |  | resources none → DIRECTOR PROYECTO [25%]; INGENIERO AGRONOMO [25%]; ECONOMISTA [50%]; SOCIOLOGO [25%]; INGENIERO EN MEDIOAMBIENTE [25%] |
| 5 | 1.1.3 FINANCIACION |  |  | resources none → DIRECTOR PROYECTO [15%]; INGENIERO AGRONOMO [25%]; ECONOMISTA [50%]; SOCIOLOGO [25%] |
| 6 | 1.1.4 COMITÉ DE COORDINACION |  |  | resources none → DIRECTOR PROYECTO [25%] |
| 7 | 1.1.5 EQUIPO DE FORMULACION |  |  | resources none → DIRECTOR PROYECTO [25%]; ECONOMISTA [20%]; SOCIOLOGO [10%]; INGENIERO EN MEDIOAMBIENTE [10%]; INGENIERO AGRONOMO [10%]; ADMINISTRATIVO [10%] |
| 8 | 1.1.6 METODOLOGIA Y PLAN DE TRABAJO |  |  | resources none → INGENIERO AGRONOMO [50%]; DIRECTOR PROYECTO [50%]; ECONOMISTA; SOCIÓLOGO [50%]; INGENIERO EN MEDIOAMBIENTE [50%]; ADMINISTRATIVO [50%] |
| 9 | 1.1.7 DOC Nº1 |  |  | resources none → DIRECTOR PROYECTO [50%]; ECONOMISTA [50%]; SOCIOLOGO [20%]; INGENIERO EN MEDIOAMBIENTE [20%]; INGENIERO AGRONOMO [20%]; ADMINISTRATIVO |
| 10 | 1.1.8 ENTREGA DOC Nº1 |  |  | resources none → DIRECTOR PROYECTO [50%] |
| 11 | 1.1.9 SEMINARIO LANZ. POYECTO |  |  | resources none → DIRECTOR PROYECTO; ECONOMISTA; SOCIOLOGO; INGENIERO EN MEDIOAMBIENTE; INGENIERO AGRÓNOMO; ADMINISTRATIVO |
| 14 | 1.2.1.1 POLITICAS Y PROGRAMAS |  |  | resources none → DIRECTOR PROYECTO [20%]; INGENIERO AGRONOMO [50%]; ECONOMISTA [40%]; ADMINISTRATIVO [20%]; INGENIERO EN MEDIOAMBIENTE [20%] |
| 15 | 1.2.1.2 MARCO LEGAL |  |  | resources none → DIRECTOR PROYECTO [20%]; INGENIERO AGRONOMO [20%]; ADMINISTRATIVO [50%]; ECONOMISTA [40%] |
| 16 | 1.2.1.3 BD EXISTENTE |  |  | resources none → DIRECTOR PROYECTO [20%]; INGENIERO AGRONOMO [50%] |
| 18 | 1.2.2.1 INVENTARIO AMBIENAL | 2013-03-22 → 2013-05-15 (+54d) | 2013-05-09 → 2013-07-02 (+54d) | resources none → INGENIERO EN MEDIOAMBIENTE; INGENIERO AGRONOMO [50%]; ECONOMISTA [40%]; ADMINISTRATIVO [20%]; EXPERTO EN GIS [50%] |
| 19 | 1.2.2.2 INFRAESTTRUCTURAS Y SERVIC | 2013-05-10 → 2013-07-03 (+54d) | 2013-06-06 → 2013-07-30 (+54d) | resources none → INGENIERO AGRÓNOMO; SOCIÓLOGO [50%]; DIRECTOR PROYECTO [10%]; ADMINISTRATIVO [25%] |
| 20 | 1.2.2.3 ANALISIS DE SECTORES | 2013-06-07 → 2013-07-31 (+54d) | 2013-07-11 → 2013-09-03 (+54d) | resources none → DIRECTOR PROYECTO [20%]; ECONOMISTA; INGENIERO AGRONOMO [50%]; ADMINISTRATIVO [50%] |
| 21 | 1.2.2.4 ANALISIS POBLACIONAL |  |  | resources none → SOCIÓLOGO; INGENIERO AGRONOMO [25%]; ADMINISTRATIVO [25%] |
| 22 | 1.2.2.5 SISTEMA TERRITORIAL INFO |  |  | resources none → SOCIÓLOGO; INGENIERO AGRONOMO [25%]; ADMINISTRATIVO [25%]; EXPERTO EN GIS |
| 24 | 1.2.3.1 IDENT. AGENTES Y TIPOLOGIA |  |  | resources none → DIRECTOR PROYECTO [50%]; SOCIÓLOGO; INGENIERO AGRONOMO [50%]; ADMINISTRATIVO [25%] |
| 25 | 1.2.3.2 ENCUESTA CON LOS AGENTES |  |  | resources none → DIRECTOR PROYECTO [50%]; SOCIÓLOGO; INGENIERO AGRONOMO [50%]; ADMINISTRATIVO [25%] |
| 26 | 1.2.3.3 TALLER DE PARTICIPACION AP |  |  | resources none → SOCIÓLOGO; INGENIERO AGRONOMO [50%]; ADMINISTRATIVO [50%]; DIRECTOR PROYECTO [15%] |
| 27 | 1.2.3.4 ANALISIS PROSPECIVO "SIN" |  |  | resources none → INGENIERO AGRONOMO [25%]; ECONOMISTA [50%]; SOCIOLOGO [25%]; INGENIERO EN MEDIOAMBIENTE [25%]; DIRECTOR PROYECTO [15%] |
| 28 | 1.2.3.5 INFORME DE PARTICIPACION |  |  | resources none → DIRECTOR PROYECTO [30%]; INGENIERO AGRONOMO [25%]; ECONOMISTA [50%]; SOCIOLOGO [25%]; INGENIERO EN MEDIOAMBIENTE [25%]; ADMINISTRATIVO [50%] |
| 29 | 1.2.3.6 PRESENTACION Y VAL. CONCLUSIONES |  |  | resources none → DIRECTOR PROYECTO [25%]; INGENIERO AGRONOMO [10%]; ECONOMISTA [20%]; SOCIOLOGO [10%]; ADMINISTRATIVO [25%] |
| 30 | 1.2.4 CONCLUSIONES Y DOC Nº2 |  |  | resources none → DIRECTOR PROYECTO [50%]; INGENIERO AGRONOMO [25%]; ADMINISTRATIVO; ECONOMISTA [50%]; INGENIERO EN MEDIOAMBIENTE [20%] |
| 33 | 1.3.1 OBJETTIVOS Y METAS |  |  | resources none → DIRECTOR PROYECTO; INGENIERO AGRONOMO [50%] |
| 34 | 1.3.2 ALTERNATIVAS ESTRATEGICAS |  |  | resources none → DIRECTOR PROYECTO [50%]; INGENIERO AGRONOMO; ECONOMISTA; INGENIERO EN MEDIOAMBIENTE [50%] |
| 35 | 1.3.3 FORMULACION DE LOS COMPONENTTES |  |  | resources none → INGENIERO AGRONOMO [50%]; ECONOMISTA [50%]; INGENIERO EN MEDIOAMBIENTE [50%] |
| 36 | 1.3.4 DISEÑO DE LA ORGANIZACIÓN |  |  | resources none → INGENIERO AGRONOMO [50%]; ECONOMISTA [50%]; INGENIERO EN MEDIOAMBIENTE [50%] |
| 37 | 1.3.5 SISTEMA DE SEGUIMIENTO Y EVALUACION |  |  | resources none → INGENIERO AGRONOMO [50%]; ECONOMISTA [50%]; INGENIERO EN MEDIOAMBIENTE [50%] |
| 38 | 1.3.6 PRESUPUESTACION |  |  | resources none → INGENIERO AGRONOMO [50%]; ECONOMISTA [50%]; INGENIERO EN MEDIOAMBIENTE [50%] |
| 39 | 1.3.7 DOC Nº3 ENTREGRA PROMOTOR |  |  | resources none → DIRECTOR PROYECTO |
| 42 | 1.4.1 EVALUACION ECONOMICO-FINANCIERA |  |  | resources none → DIRECTOR PROYECTO [25%]; INGENIERO AGRONOMO [50%]; ECONOMISTA |
| 43 | 1.4.2 EVALUACION SOCIOAL Y CULTTURAL |  |  | resources none → DIRECTOR PROYECTO [25%]; INGENIERO AGRONOMO [50%]; ECONOMISTA [15%]; SOCIOLOGO |
| 44 | 1.4.3 EVALUACION AMBIENTAL |  |  | resources none → DIRECTOR PROYECTO [25%]; INGENIERO AGRONOMO [50%]; ECONOMISTA [15%]; INGENIERO EN MEDIOAMBIENTE |
| 45 | 1.4.4 EVALUACION DE RIESGO, SEGURIDAD Y SALUD DEL PROYECTO |  |  | resources none → DIRECTOR PROYECTO [25%]; INGENIERO AGRONOMO [50%]; ECONOMISTA [15%]; TECNICOS DE APOYO |
| 49 | 1.5.1 MEMORIA |  |  | resources none → INGENIERO AGRONOMO [50%]; ECONOMISTA [25%]; DIRECTOR PROYECTO [10%]; TECNICOS DE APOYO |
| 50 | 1.5.2 ANEXOS A LA MEMORIA |  |  | resources none → INGENIERO AGRONOMO [50%]; ECONOMISTA [25%]; DIRECTOR PROYECTO [10%]; INGENIERO EN MEDIOAMBIENTE [50%]; ADMINISTRATIVO [50%]; TECNICOS DE APOYO |
| 51 | 1.5.3 PLANOS |  |  | resources none → INGENIERO AGRONOMO [50%]; ECONOMISTA [25%]; DIRECTOR PROYECTO [10%]; INGENIERO EN MEDIOAMBIENTE [50%]; ADMINISTRATIVO [50%]; TECNICOS DE APOYO; EXPERTO EN GIS |
| 52 | 1.5.4 PLIEGO DE CONDICIONES |  |  | resources none → INGENIERO AGRONOMO [50%]; ECONOMISTA [25%]; DIRECTOR PROYECTO [10%]; INGENIERO EN MEDIOAMBIENTE [50%]; ADMINISTRATIVO [50%]; TECNICOS DE APOYO |
| 53 | 1.5.5 PRESUPUESTO |  |  | resources none → ECONOMISTA [25%]; INGENIERO AGRONOMO [50%]; DIRECTOR PROYECTO [10%]; INGENIERO EN MEDIOAMBIENTE [50%]; ADMINISTRATIVO [50%]; TECNICOS DE APOYO |
| 54 | 1.5.6 ESTUDIO DE SEGURIDAD Y SALUD |  |  | resources none → INGENIERO AGRONOMO [50%]; ECONOMISTA [25%]; DIRECTOR PROYECTO [10%]; INGENIERO EN MEDIOAMBIENTE [50%]; ADMINISTRATIVO [50%]; TECNICOS DE APOYO |

## Version 4 (saved 2013-05-03)

Note of the change: Optimización tiempo cumplir plazo entrega

Last finish 2014-02-27 → 2014-02-24 (-3d).

Changed:

| ID | Task | Start | Finish | Duration | Total float |
| --- | --- | --- | --- | --- | --- |
| 25 | 1.2.3.2 ENCUESTA CON LOS AGENTES |  | 2013-08-27 → 2013-08-23 (-4d) | 60d → 58d | none → 0d |
| 27 | 1.2.3.4 ANALISIS PROSPECIVO "SIN" |  | 2013-06-27 → 2013-06-25 (-2d) | 6d → 4d | none → 43d |
| 28 | 1.2.3.5 INFORME DE PARTICIPACION | 2013-08-28 → 2013-08-26 (-2d) | 2013-09-10 → 2013-09-06 (-4d) |  | none → 0d |
| 29 | 1.2.3.6 PRESENTACION Y VAL. CONCLUSIONES | 2013-09-11 → 2013-09-09 (-2d) | 2013-09-12 → 2013-09-10 (-2d) |  | none → 0d |
| 30 | 1.2.4 CONCLUSIONES Y DOC Nº2 | 2013-09-13 → 2013-09-11 (-2d) | 2013-09-13 → 2013-09-11 (-2d) |  | none → 0d |
| 31 | 1.2.5 DOC Nº2 REVISION PROMOTOR | 2013-09-16 → 2013-09-12 (-4d) | 2013-09-16 → 2013-09-12 (-4d) |  | none → 0d |
| 35 | 1.3.3 FORMULACION DE LOS COMPONENTTES |  | 2013-12-19 → 2013-12-13 (-6d) | 60d → 56d | none → 2d |
| 36 | 1.3.4 DISEÑO DE LA ORGANIZACIÓN | 2013-12-20 → 2013-12-16 (-4d) | 2014-01-02 → 2013-12-27 (-6d) |  | none → 2d |
| 37 | 1.3.5 SISTEMA DE SEGUIMIENTO Y EVALUACION | 2014-01-03 → 2013-12-30 (-4d) | 2014-01-13 → 2014-01-07 (-6d) |  | none → 11d |
| 38 | 1.3.6 PRESUPUESTACION | 2014-01-03 → 2013-12-30 (-4d) | 2014-01-08 → 2014-01-02 (-6d) |  | none → 2d |
| 39 | 1.3.7 DOC Nº3 ENTREGRA PROMOTOR | 2014-01-09 → 2014-01-02 (-7d) | 2014-01-09 → 2014-01-02 (-7d) |  | none → 2d |
| 40 | 1.3.8 DOC Nº3 REVISION PROMOTOR | 2014-01-09 → 2014-01-03 (-6d) | 2014-01-22 → 2014-01-16 (-6d) |  | none → 2d |
| 41 | **1.4 EVALUACION MULTICRITERIO** | 2014-01-23 → 2014-01-17 (-6d) | 2014-02-12 → 2014-02-06 (-6d) |  | none → 2d |
| 42 | 1.4.1 EVALUACION ECONOMICO-FINANCIERA | 2014-01-23 → 2014-01-17 (-6d) | 2014-02-05 → 2014-01-30 (-6d) |  | none → 2d |
| 43 | 1.4.2 EVALUACION SOCIOAL Y CULTTURAL | 2014-01-23 → 2014-01-17 (-6d) | 2014-02-05 → 2014-01-30 (-6d) |  | none → 2d |
| 44 | 1.4.3 EVALUACION AMBIENTAL | 2014-01-23 → 2014-01-17 (-6d) | 2014-02-05 → 2014-01-30 (-6d) |  | none → 2d |
| 45 | 1.4.4 EVALUACION DE RIESGO, SEGURIDAD Y SALUD DEL PROYECTO | 2014-01-23 → 2014-01-17 (-6d) | 2014-02-05 → 2014-01-30 (-6d) |  | none → 17d |
| 46 | 1.4.5 ENTREGA DOC Nº 4 | 2014-02-06 → 2014-01-30 (-7d) | 2014-02-06 → 2014-01-30 (-7d) |  | none → 17d |
| 47 | 1.4.6 REVISION DOC Nº4 | 2014-02-06 → 2014-01-31 (-6d) | 2014-02-12 → 2014-02-06 (-6d) |  | none → 2d |
| 48 | **1.5 DOCUMENTACION** | 2014-02-13 → 2014-02-07 (-6d) | 2014-02-26 → 2014-02-20 (-6d) |  | none → 2d |
| 49 | 1.5.1 MEMORIA | 2014-02-13 → 2014-02-07 (-6d) | 2014-02-20 → 2014-02-14 (-6d) |  | none → 6d |
| 50 | 1.5.2 ANEXOS A LA MEMORIA | 2014-02-13 → 2014-02-07 (-6d) | 2014-02-26 → 2014-02-20 (-6d) |  | none → 2d |
| 51 | 1.5.3 PLANOS | 2014-02-13 → 2014-02-07 (-6d) | 2014-02-26 → 2014-02-20 (-6d) |  | none → 2d |
| 52 | 1.5.4 PLIEGO DE CONDICIONES | 2014-02-13 → 2014-02-07 (-6d) | 2014-02-17 → 2014-02-11 (-6d) |  | none → 9d |
| 53 | 1.5.5 PRESUPUESTO | 2014-02-13 → 2014-02-07 (-6d) | 2014-02-17 → 2014-02-11 (-6d) |  | none → 9d |
| 54 | 1.5.6 ESTUDIO DE SEGURIDAD Y SALUD | 2014-02-13 → 2014-02-07 (-6d) | 2014-02-26 → 2014-02-20 (-6d) |  | none → 2d |
| 55 | 1.5.7 ENTREGA DEL PROYECTO | 2014-02-27 → 2014-02-20 (-7d) | 2014-02-27 → 2014-02-20 (-7d) |  | none → 2d |
